# 需求管理

Schedule from MS Project, 2018-09-20 to 2019-01-25.
Microsoft

## Calendars

- 标准: Mon-Fri 08:00-12:00, 13:00-17:00; Sat-Sun off. Exceptions (off unless hours are given): 2018-09-29 to 2018-09-30 08:00-12:00, 13:00-17:00, 2018-10-13 08:00-12:00, 13:00-17:00, 2018-10-20 08:00-12:00, 13:00-17:00, 2018-11-10 to 2018-11-11 08:00-12:00, 13:00-17:00, 2018-11-17 to 2018-11-18 08:00-12:00, 13:00-17:00, 2018-12-01 to 2018-12-02 08:00-12:00, 13:00-17:00, 2018-12-08 08:00-12:00, 13:00-17:00.

## Resources

| Resource |
| --- |
| 黄依伦 |
| 平易成 |
| 童鑫 |
| 陈侃 |
| 王淑雯 |
| 所有人 |

## Schedule

| ID | WBS | Task | Duration | Start | Finish | Predecessors | Total slack | Free slack | Constraint | Resources | Work | Text7 |
| --- | --- | --- | --- | --- | --- | --- | --- | --- | --- | --- | --- | --- |
| 1 | 1 | **教学辅助网站** | 103d? | 2018-09-20 08:00 | 2019-01-25 17:00 |  | 0d |  |  |  | 611.8h |  |
| 2 | 1.1 | **准备工作** | 5.33d | 2018-09-20 08:00 | 2018-09-27 10:36 |  | 97.15d |  |  |  | 20.4h |  |
| 3 | 1.1.1 | 第一次会议 | 0.2d | 2018-09-20 08:00 | 2018-09-20 09:36 |  | 97.15d | 0d | start no earlier than 2018-09-20 08:00 | 平易成; 童鑫; 王淑雯; 陈侃; 黄依伦 | 8h |  |
| 4 | 1.1.2 | 第二次会议 | 0.2d | 2018-09-27 08:00 | 2018-09-27 09:36 | 3 | 92.35d | 0d | start no earlier than 2018-09-27 08:00 | 平易成; 童鑫; 王淑雯; 陈侃; 黄依伦 | 8h |  |
| 5 | 1.1.3 | 确定人员分工 | 1h | 2018-09-20 09:36 | 2018-09-20 10:36 | 3 | 102.67d |  |  | 平易成 | 1h |  |
| 6 | 1.1.4 | 制定组内章程 | 1h | 2018-09-27 09:36 | 2018-09-27 10:36 | 4 | 97.67d |  |  | 平易成; 童鑫; 王淑雯; 陈侃; 黄依伦 | 3.4h |  |
| 7 | 1.2 | **第一阶段** | 25.62d | 2018-09-29 08:00 | 2018-10-30 14:00 |  | 70.38d |  |  |  | 199.4h |  |
| 8 | 1.2.1 | **项目计划起草** | 1d | 2018-09-29 08:00 | 2018-09-29 17:00 |  | 91.38d | 0d |  |  | 22h | 项目计划模板 |
| 9 | 1.2.1.1 | 工作产品、进度和成本 | 0.75d | 2018-09-29 08:00 | 2018-09-29 15:00 |  | 91.62d |  |  | 陈侃 | 6h |  |
| 10 | 1.2.1.2 | 技术过程 | 0.5d | 2018-09-29 08:00 | 2018-09-29 12:00 |  | 91.88d |  |  | 童鑫 | 4h |  |
| 11 | 1.2.1.3 | 项目组织和管理过程 | 0.5d | 2018-09-29 08:00 | 2018-09-29 12:00 |  | 91.88d |  |  | 平易成 | 4h |  |
| 12 | 1.2.1.4 | 项目介绍和需求计划 | 1d | 2018-09-29 08:00 | 2018-09-29 17:00 |  | 91.38d |  |  | 黄依伦 | 8h |  |
| 13 | 1.2.2 | 甘特图初稿 | 1.25d | 2018-09-30 08:00 | 2018-10-01 10:00 | 8 | 93.75d |  | start no earlier than 2018-09-30 08:00 | 王淑雯 | 10h | project工具 |
| 14 | 1.2.3 | 第三次会议 | 0.2d | 2018-10-05 08:00 | 2018-10-05 09:36 | 4 | 84.55d | 2.8d | start no earlier than 2018-10-05 08:00 | 平易成; 童鑫; 王淑雯; 陈侃; 黄依伦 | 8h |  |
| 15 | 1.2.4 | UML概述翻转 | 1d | 2018-10-10 08:00 | 2018-10-10 17:00 | 14 | 81.75d | 0d | start no earlier than 2018-10-10 08:00 | 平易成 | 8h | UML2基础、UML用户指南 |
| 16 | 1.2.5 | UML概述翻转完善 | 0.88d | 2018-10-11 08:00 | 2018-10-11 16:00 | 15 | 85.12d |  | start no earlier than 2018-10-11 08:00 | 平易成 | 7h | 书本内容知识理解 |
| 17 | 1.2.6 | 第四次会议 | 0.2d | 2018-10-12 08:00 | 2018-10-12 09:36 | 14 | 84.6d | 5.8d | start no earlier than 2018-10-12 08:00 | 平易成; 童鑫; 王淑雯; 陈侃; 黄依伦 | 8h | 小组成员会议 |
| 18 | 1.2.7 | 可行性分析初稿 | 1d | 2018-10-13 08:00 | 2018-10-13 17:00 | 8 | 83d |  | start no earlier than 2018-10-13 08:00 | 黄依伦 | 8h | 可行性计划模板 |
| 19 | 1.2.8 | 原型设计1 | 0.75d | 2018-10-22 08:00 | 2018-10-22 15:00 | 25 | 76.25d |  | start no earlier than 2018-10-13 08:00 | 童鑫 | 6h |  |
| 20 | 1.2.9 | 需求项目计划修改1 | 0.62d | 2018-10-13 08:00 | 2018-10-13 14:00 | 8 | 80.38d | 5.38d | start no earlier than 2018-10-13 08:00 | 童鑫 | 5h | 项目计划初稿 |
| 21 | 1.2.10 | UML工具翻转 | 1d | 2018-10-25 08:00 | 2018-10-25 17:00 | 15, 27 | 72.5d | 0d | start no earlier than 2018-10-17 08:00 | 王淑雯 | 8h | UML2基础 |
| 22 | 1.2.11 | UML工具翻转修改完善 | 0.5d | 2018-10-26 08:00 | 2018-10-26 12:00 | 21 | 72.5d |  | start no earlier than 2018-10-18 08:00 | 王淑雯 | 4h | 书本内容和UML工具翻转PPT初稿 |
| 23 | 1.2.12 | 甘特图修改 | 0.75d | 2018-10-22 08:00 | 2018-10-22 15:00 | 25 | 76.25d |  | start no earlier than 2018-10-18 08:00 | 王淑雯 | 6h | 甘特图初稿 |
| 24 | 1.2.13 | 第五次会议 | 0.2d | 2018-10-19 08:00 | 2018-10-19 09:36 | 17 | 78.8d |  | start no earlier than 2018-10-19 08:00 | 平易成; 童鑫; 王淑雯; 陈侃; 黄依伦 | 6.4h | 小组成员会议 |
| 25 | 1.2.14 | 需求工程文档初稿 | 1d | 2018-10-20 08:00 | 2018-10-20 17:00 | 20 | 75d | 0d | start no earlier than 2018-10-20 08:00 | 黄依伦; 陈侃 | 16h | 需求工程文档模板 |
| 26 | 1.2.15 | 项目章程初稿 | 1d | 2018-10-22 08:00 | 2018-10-22 17:00 | 25 | 75d | 4.5d | start no earlier than 2018-10-20 08:00 | 陈侃 | 8h | 项目章程模板 |
| 27 | 1.2.16 | UML基础一功能图翻转 | 1d | 2018-10-24 08:00 | 2018-10-24 17:00 | 15 | 70.75d | 0d | start no earlier than 2018-10-24 08:00 | 陈侃 | 8h | UML2 |
| 28 | 1.2.17 | 第六次会议 | 0.2d | 2018-10-25 08:00 | 2018-10-25 09:36 | 27 | 73.05d | 0d | start no earlier than 2018-10-25 08:00 | 平易成; 童鑫; 王淑雯; 陈侃; 黄依伦 | 8h | 小组成员会议 |
| 29 | 1.2.18 | UML基础一功能图翻转修改 | 0.62d | 2018-10-26 08:00 | 2018-10-26 14:00 | 27 | 69.75d | 0d | start no earlier than 2018-10-26 08:00 | 陈侃 | 5h | UML书上知识 |
| 30 | 1.2.19 | 原型设计2 | 0.75d | 2018-10-25 09:36 | 2018-10-25 16:36 | 28 | 73.05d |  |  | 童鑫 | 6h |  |
| 31 | 1.2.20 | QA计划初稿 | 1d | 2018-10-26 14:00 | 2018-10-29 14:00 | 29 | 69.75d | 0d | finish no earlier than 2018-10-27 17:00 | 平易成; 童鑫 | 14h | 质量保证模板 |
| 32 | 1.2.21 | 需求工程文档修改 | 0.75d | 2018-10-29 14:00 | 2018-10-30 11:00 | 31 | 70.12d | 8.62d | start no earlier than 2018-10-26 08:00 | 平易成 | 6h | 需求工程文档初稿 |
| 33 | 1.2.22 | 需求PPT初稿 | 1d | 2018-10-29 14:00 | 2018-10-30 14:00 | 31 | 70.38d |  | start no earlier than 2018-10-26 08:00 | 黄依伦 | 8h | 需求PPT模板 需求工程文档 |
| 34 | 1.2.23 | 风险子计划初稿 | 0.75d | 2018-10-29 14:00 | 2018-10-30 11:00 | 31 | 69.75d | 4.62d | start no earlier than 2018-10-27 08:00 | 王淑雯 | 6h | 风险子计划模板 |
| 35 | 1.2.24 | 项目章程初稿修改 | 1d | 2018-10-29 14:00 | 2018-10-30 14:00 | 31, 26 | 70.38d |  | start no earlier than 2018-10-27 08:00 | 陈侃 | 8h | 项目章程初稿 |

Notes:
- 3: 第一次会议记录及录音文件
- 4: 第二次会议记录及录音文件
- 5: 组员各自分工
- 6: 输出组内制度文档
- 8: 项目计划初稿
- 12: 输出项目计划初稿文档
- 13: 输出甘特图的初稿
- 14: 第三次会议记录及录音文件
- 15: UML概述PPT初稿
- 16: UML概述PPT
- 17: 第四次会议记录及录音文件
- 18: 可行性计划分析文档初稿
- 19: 原型设计初稿
- 20: 项目计划初稿修改版
- 21: UML2工具PPT
- 22: UML工具翻转PPT
- 23: 甘特图修改
- 24: 第五次会议记录和录音
- 25: 需求工程文档0.1.1
- 26: 项目章程初稿0.1.1
- 27: UML功能图PPT
- 28: 第六次小组会议记录和录音文件
- 29: UML基础一PPT
- 31: QA初稿
- 32: 需求工程文档修改版
- 33: 需求PPT初稿0.1.1
- 34: 风险子计划初稿
- 35: 项目章程

| ID | WBS | Task | Type | Duration | Start | Finish | Predecessors | Total slack | Free slack | Constraint | Resources | Work | Text7 |
| --- | --- | --- | --- | --- | --- | --- | --- | --- | --- | --- | --- | --- | --- |
| 36 | 1.3 | **第一次迭代** |  | 15d | 2018-10-31 08:00 | 2018-11-16 17:00 |  | 55d |  |  |  | 103h |  |
| 37 | 1.3.1 | 可行性分析组内评审 | milestone | 0.25d | 2018-10-31 08:00 | 2018-10-31 10:00 |  | 69.75d |  | start no earlier than 2018-10-31 08:00 | 平易成 | 2h |  |
| 38 | 1.3.2 | UML基础二界面原型翻转 |  | 1d | 2018-10-31 08:00 | 2018-10-31 17:00 | 27 | 68.5d | 1d | start no earlier than 2018-10-31 08:00 | 黄依伦 | 8h | UML用户指南和UML2 |
| 39 | 1.3.3 | UML基础二界面原型翻转修改 |  | 0.5d | 2018-11-02 08:00 | 2018-11-02 12:00 | 38 | 67.5d |  | start no earlier than 2018-11-02 08:00 | 黄依伦 | 4h | UML知识积累 |
| 40 | 1.3.4 | 第七次会议 |  | 0.2d | 2018-11-02 08:00 | 2018-11-02 09:36 | 28 | 67.6d | 4.8d | start no earlier than 2018-11-02 08:00 | 平易成; 童鑫; 王淑雯; 陈侃; 黄依伦 | 8h | 小组成员会议 |
| 41 | 1.3.5 | QA计划初稿修改 |  | 1d | 2018-11-05 08:00 | 2018-11-05 17:00 | 31 | 66d |  | start no earlier than 2018-11-05 08:00 | 陈侃 | 8h | QA计划初稿 |
| 42 | 1.3.6 | 风险子计划初稿修改 |  | 0.88d | 2018-11-06 08:00 | 2018-11-06 16:00 | 34 | 65.12d |  | start no earlier than 2018-11-06 08:00 | 陈侃 | 7h | 风险子计划初稿 |
| 43 | 1.3.7 | 项目计划评审 |  | 0.25d | 2018-11-05 08:00 | 2018-11-05 10:00 | 37 | 64.5d |  | start no earlier than 2018-11-05 08:00 | 平易成 | 2h | 项目计划 |
| 44 | 1.3.8 | 项目计划修改 |  | 0.62d | 2018-11-05 10:00 | 2018-11-05 16:00 | 43 | 64.5d | 0.12d | start no earlier than 2018-11-04 17:00 | 黄依伦; 陈侃 | 9h | 项目计划 |
| 45 | 1.3.9 | 原型设计3 |  | 0.75d | 2018-11-06 08:00 | 2018-11-06 15:00 | 44 | 64.38d | 6.25d | start no earlier than 2018-11-06 08:00 | 童鑫 | 6h |  |
| 46 | 1.3.10 | 第一次访谈 |  | 0.5d | 2018-11-06 08:00 | 2018-11-06 12:00 | 44 | 65.5d |  | start no earlier than 2018-11-06 08:00 | 黄依伦; 陈侃 | 8h | 获取第一次需求 |
| 47 | 1.3.11 | 第八次会议 |  | 0.2d | 2018-11-09 08:00 | 2018-11-09 09:36 | 40 | 62.8d |  | start no earlier than 2018-11-09 08:00 | 平易成; 童鑫; 王淑雯; 陈侃; 黄依伦 | 8h | 小组所有成员 |
| 48 | 1.3.12 | 需求工程文档二次修改 |  | 0.5d | 2018-11-10 08:00 | 2018-11-10 12:00 | 32 | 61.5d |  | start no earlier than 2018-11-10 08:00 | 平易成 | 4h | 需求工程文档 |
| 49 | 1.3.13 | 甘特图修改2 |  | 0.75d | 2018-11-11 08:00 | 2018-11-11 15:00 | 44 | 60.25d |  | start no earlier than 2018-11-11 08:00 | 王淑雯 | 6h | 甘特图1 |
| 50 | 1.3.14 | 原型设计4 |  | 0.88d | 2018-11-13 08:00 | 2018-11-13 16:00 | 45 | 58.12d |  | start no earlier than 2018-11-13 08:00 | 童鑫 | 7h |  |
| 51 | 1.3.15 | 第九次会议 |  | 0.2d | 2018-11-14 08:00 | 2018-11-14 09:36 |  | 55.92d | 1.8d | start no earlier than 2018-11-14 08:00 | 平易成; 童鑫; 王淑雯; 陈侃; 黄依伦 | 8h | 小组成员会议 |
| 52 | 1.3.16 | 可行性分析修改 |  | 1d | 2018-11-16 08:00 | 2018-11-16 17:00 | 51 | 55d |  | start no earlier than 2018-11-16 08:00 | 黄依伦 | 8h | 可行性分析 |
| 53 | 1.4 | **第二轮迭代** |  | 10.75d? | 2018-11-17 08:00 | 2018-11-29 15:00 |  | 44.25d |  |  |  | 59h |  |
| 54 | 1.4.1 | 愿景文档初稿1 |  | 0.5d | 2018-11-17 08:00 | 2018-11-17 12:00 | 51 | 53.12d | 4.5d | start no earlier than 2018-11-17 08:00 | 王淑雯 | 4h | 愿景文档模板 |
| 55 | 1.4.2 | 需求PPT初稿修改 |  | 0.75d | 2018-11-18 08:00 | 2018-11-18 15:00 | 51 | 53.25d |  | start no earlier than 2018-11-18 08:00 | 平易成 | 6h | 需求PPT初稿 |
| 56 | 1.4.3 | 需求规格说明书起草 |  | 1d | 2018-11-23 08:00 | 2018-11-23 17:00 | 58 | 48d |  | start no earlier than 2018-11-23 08:00 | 王淑雯 | 8h | 需求规格模板 |
| 57 | 1.4.4 | 愿景文档初稿2 |  | 0.62d | 2018-11-22 08:00 | 2018-11-22 14:00 | 54 | 48.62d | 0.38d | start no earlier than 2018-11-22 08:00 | 平易成 | 5h | 愿景文档模板 |
| 58 | 1.4.5 | 第十次会议 |  | 0.2d | 2018-11-22 08:00 | 2018-11-22 09:36 | 51 | 48.52d | 0.8d | start no earlier than 2018-11-22 08:00 | 平易成; 黄依伦; 陈侃; 童鑫; 王淑雯 | 8h | 小组成员会议 |
| 59 | 1.4.6 | 愿景文档初稿3 |  | 0.75d | 2018-11-23 08:00 | 2018-11-23 15:00 | 57 | 48.25d |  | start no earlier than 2018-11-23 08:00 | 黄依伦 | 6h | 愿景文档初稿和愿景文档 |
| 60 | 1.4.7 | 访谈学生代表 |  | 1d | 2018-11-23 08:00 | 2018-11-25 17:00 | 58 | 48d |  | finish no earlier than 2018-11-25 17:00 | 陈侃 | 8h | 了解代表的一些需求 |
| 61 | 1.4.8 | UML基础三翻转 |  | 1d | 2018-11-28 08:00 | 2018-11-28 17:00 |  | 42.35d | 0d | start no earlier than 2018-11-28 08:00 | 童鑫 | 8h | UML2 |
| 62 | 1.4.9 | 需求工程文档评审 | milestone | 0.25d? | 2018-11-29 08:00 | 2018-11-29 10:00 | 61 | 42.35d | 0d |  | 平易成 | 2h | 前阶段工作文档甘特图 |
| 63 | 1.4.10 | UML基础三翻转修改 |  | 0.5d | 2018-11-29 10:00 | 2018-11-29 15:00 | 62 | 42.35d | 0d | start no earlier than 2018-11-29 08:00 | 童鑫 | 4h | uml基础三PPT |

Notes:
- 38: UML基础二PPT
- 39: UML基础二PPT
- 40: 第七次小组会议记录及录音文件
- 41: QA计划
- 42: 风险子计划
- 43: 项目计划存在的问题
- 44: 项目计划
- 46: 第一次访谈记录
- 47: 第八次会议记录
- 48: 需求工程文档
- 49: 甘特图
- 51: 第九次会议记录及录音
- 52: 可行性分析
- 54: 愿景文档初稿
- 55: 需求PPT
- 56: 需求规格说明
- 57: 愿景文档初稿
- 58: 第十次会议记录及录音
- 59: 愿景文档
- 60: 访谈记录
- 61: 第十次会议记录及录音
- 62: 文档改正
- 63: UML基础三PPT修改版

| ID | WBS | Task | Duration | Start | Finish | Predecessors | Total slack | Free slack | Constraint | Resources | Work | Text7 |
| --- | --- | --- | --- | --- | --- | --- | --- | --- | --- | --- | --- | --- |
| 64 | 1.5 | **第三轮迭代** | 11.75d | 2018-11-29 08:00 | 2018-12-11 15:00 |  | 33.25d |  |  |  | 114h |  |
| 65 | 1.5.1 | UML基础四翻转 | 0.4d | 2018-11-29 15:00 | 2018-11-30 09:12 | 63 | 42.35d | 0d | start no earlier than 2018-11-28 08:00 | 平易成; 陈侃; 童鑫; 王淑雯; 黄依伦 | 16h | UML2和用户指南 |
| 66 | 1.5.2 | UML基础四翻转修改 | 0.5d | 2018-11-30 09:12 | 2018-11-30 14:12 | 65 | 42.35d | 0d |  | 童鑫 | 4h | UML基础四翻转PPT |
| 67 | 1.5.3 | 修改需求PPT | 1d | 2018-11-30 14:12 | 2018-12-01 14:12 | 66 | 42.35d |  |  | 黄依伦; 平易成 | 13h | 需求PPT |
| 68 | 1.5.4 | 需求工程计划修改 | 0.75d | 2018-11-30 08:00 | 2018-11-30 15:00 |  | 43.05d | 0d | start no earlier than 2018-11-30 08:00 | 平易成; 童鑫 | 11h | 需求工程计划初稿 |
| 69 | 1.5.5 | 第十一次会议 | 0.2d | 2018-11-29 08:00 | 2018-11-29 09:36 | 58 | 43.73d | 0.8d | start no earlier than 2018-11-29 08:00 | 平易成; 童鑫; 陈侃; 王淑雯; 黄依伦 | 8h | 小组成员会议 |
| 70 | 1.5.6 | 第十二次会议 | 0.2d | 2018-11-30 08:00 | 2018-11-30 09:36 | 69 | 42.92d | 0.8d | start no earlier than 2018-11-30 08:00 | 平易成; 童鑫; 王淑雯; 陈侃; 黄依伦 | 8h | 小组成员会议 |
| 71 | 1.5.7 | 甘特图修改3 | 0.88d | 2018-12-01 08:00 | 2018-12-01 16:00 | 70 | 42.12d |  | start no earlier than 2018-12-01 08:00 | 王淑雯 | 7h | 甘特图 |
| 72 | 1.5.8 | 软件需求变更文档 | 0.62d | 2018-12-03 08:00 | 2018-12-03 14:00 |  | 37.67d | 0.38d | start no earlier than 2018-12-03 08:00 | 童鑫 | 5h | 软件需求变更模板 |
| 73 | 1.5.9 | 第一次teambuilding | 0.2d | 2018-11-30 15:00 | 2018-11-30 16:36 | 68, 69 | 43.05d |  |  | 平易成; 童鑫; 王淑雯; 陈侃; 黄依伦 | 8h | 小组所有成员文档整合改进 |
| 74 | 1.5.10 | 第二次访谈 | 0.2d | 2018-12-04 08:00 | 2018-12-04 09:36 | 72 | 37.3d | 1.8d | start no earlier than 2018-12-04 08:00 | 平易成; 童鑫; 王淑雯; 陈侃; 黄依伦 | 8h | 跟进需求 |
| 75 | 1.5.11 | 第十三次小组会议 | 0.2d | 2018-12-06 08:00 | 2018-12-06 09:36 | 74 | 37.6d | 5.8d | start no earlier than 2018-12-06 08:00 | 平易成; 童鑫; 王淑雯; 陈侃; 黄依伦 | 8h | 确定需求 |
| 76 | 1.5.12 | 配置管理文件 | 0.25d | 2018-12-02 08:00 | 2018-12-02 10:00 |  | 41.75d |  | start no earlier than 2018-12-02 08:00 | 平易成; 陈侃 | 4h | 关于一些总体配置问题 |
| 77 | 1.5.13 | 其他管理文件 | 0.5d | 2018-12-02 08:00 | 2018-12-02 12:00 |  | 40.75d | 7.5d | start no earlier than 2018-12-02 08:00 | 平易成; 黄依伦 | 8h | 关于一些资源的管理 |
| 78 | 1.5.14 | 原型设计5 | 0.75d | 2018-12-11 08:00 | 2018-12-11 15:00 | 77 | 33.25d |  | start no earlier than 2018-12-11 08:00 | 童鑫 | 6h |  |
| 79 | 1.6 | **第四轮迭代** | 14d | 2018-12-06 08:00 | 2018-12-24 17:00 |  | 24d |  |  |  | 113h |  |
| 80 | 1.6.1 | 需求规格说明初稿 | 1d | 2018-12-06 08:00 | 2018-12-06 17:00 |  | 34.5d | 3d | start no earlier than 2018-12-06 08:00 | 王淑雯 | 8h | 需求规格说明书草稿 |
| 81 | 1.6.2 | 软件需求规格说修改1 | 1.25d | 2018-12-11 08:00 | 2018-12-12 10:00 | 74, 80 | 31.5d | 1.75d | start no earlier than 2018-12-11 08:00 | 王淑雯 | 10h | 需求规格说明书初稿 |
| 82 | 1.6.3 | 第十四次小组会议 | 0.2d | 2018-12-13 08:00 | 2018-12-13 09:36 | 75 | 31.8d |  | start no earlier than 2018-12-13 08:00 | 平易成; 童鑫; 王淑雯; 陈侃; 黄依伦 | 8h | 小组所有成员 |
| 83 | 1.6.4 | 软件需求规格说明书修改 | 1.25d | 2018-12-14 08:00 | 2018-12-17 10:00 | 81 | 29.75d |  | start no earlier than 2018-12-14 08:00 | 平易成; 童鑫; 王淑雯 | 28h | 需求规格说明书初稿修改版 |
| 84 | 1.6.5 | 编写测试用例 | 2d | 2018-12-21 08:00 | 2018-12-24 17:00 | 72 | 24d |  | start no earlier than 2018-12-21 08:00 | 平易成; 童鑫; 王淑雯; 陈侃; 黄依伦 | 59h | 各种功能模块的测试 |
| 85 | 1.7 | **项目总结** | 6d | 2019-01-18 08:00 | 2019-01-25 17:00 |  | 0d |  |  |  | 3h |  |
| 86 | 1.7.1 | 需求规格说明书评审 | 0.38d | 2019-01-18 08:00 | 2019-01-18 11:00 |  | 5.62d |  | start no earlier than 2019-01-18 08:00 | 平易成 | 3h |  |
| 87 | 1.7.2 | 项目收尾 | 2d | 2019-01-24 08:00 | 2019-01-25 17:00 |  | 0d |  | start no earlier than 2019-01-24 08:00 |  |  |  |

Notes:
- 65: UML基础四翻转PPT
- 66: UML基础四PPT修改版
- 67: 需求PPT
- 68: 需求工程计划修改
- 69: 第十一次会议记录及录音
- 70: 第十二次会议记录及录音
- 71: 甘特图
- 72: 软件需求变更0.1.1
- 73: 文档改进
- 74: 二次访谈记录
- 75: 第十三次小组会议记录及录音文件
- 76: 配置管理文档
- 77: 范围、时间、成本、人力资源、干系人、质量等品管理文档
- 80: 需求规格说明书初稿
- 81: 需求规格说明书初稿修改版
- 82: 第十四次会议记录
- 83: 需求规格说明书初稿修改版2
- 84: 测试用例
